# Snowdon Towers — Structural 4D

| id | name | phase | level | trade | tradeCode | baselineStart | baselineFinish | plannedStart | plannedFinish | duration | actualStart | actualFinish | pctComplete | resource | elementCount | unitRate | budgetCost | actualCost | status | predecessor |
| --- | --- | --- | --- | --- | --- | --- | --- | --- | --- | --- | --- | --- | --- | --- | --- | --- | --- | --- | --- | --- |
| MOB-SITE | Site setup, hoarding, welfare | Site | Mobilization | Site | MOB | 2026-01-05 | 2026-01-13 | 2026-01-05 | 2026-01-13 | 7 | 2026-01-05 | 2026-01-13 | 100 | Site management | 1 | 25000 | 25000 | 25000 | completed-ontime |  |
| ER-CIV | Entrance Ramp — Floors, Walls | Substructure | Entrance Ramp | Site Civil | CIV | 2026-01-14 | 2026-01-28 | 2026-01-14 | 2026-01-28 | 11 | 2026-01-14 | 2026-02-02 | 100 | Civil crew | 11 | 800 | 8800 | 9240 | completed-late | MOB-SITE (FS) |
| FT-FND | Footing — Structural Foundations | Substructure | Footing | Concrete | FND | 2026-01-14 | 2026-02-12 | 2026-01-14 | 2026-02-12 | 22 | 2026-01-14 | 2026-02-12 | 100 | Concrete crew A | 90 | 1500 | 135000 | 132300 | completed-ontime | MOB-SITE (FS) |
| TOF-COL | Top of Footing — Structural Columns | Substructure | Top of Footing | Concrete | COL | 2026-02-13 | 2026-02-19 | 2026-02-13 | 2026-02-19 | 5 | 2026-02-16 | 2026-02-23 | 100 | Concrete crew B | 16 | 900 | 14400 | 14400 | completed-late | prev level FRM (SS+offset) |
| TOF-FLR | Top of Footing — Floors | Substructure | Top of Footing | Concrete | FLR | 2026-02-20 | 2026-03-06 | 2026-02-20 | 2026-03-06 | 11 | 2026-02-20 | 2026-03-06 | 100 | Concrete crew A | 4 | 4000 | 16000 | 16000 | completed-ontime | prev activity (FS) |
| TOF-WALL | Top of Footing — Walls | Substructure | Top of Footing | Masonry/Concrete | WALL | 2026-02-23 | 2026-03-13 | 2026-02-23 | 2026-03-13 | 15 | 2026-02-25 | 2026-03-20 | 100 | Masonry crew | 32 | 1200 | 38400 | 41472 | completed-late | TOF-FLR (SS+3d) |
| TOF-GEN | Top of Footing — Generic Models | Substructure | Top of Footing | Finishes/MEP | GEN | 2026-03-16 | 2026-03-24 | 2026-03-16 | 2026-03-24 | 7 | 2026-03-16 | 2026-03-24 | 100 | Finishes/MEP crew | 8 | 500 | 4000 | 4000 | completed-ontime | TOF-WALL (FS+1d) |
| L1-COL | L1 — Structural Columns | Superstructure | L1 | Concrete | COL | 2026-03-25 | 2026-04-06 | 2026-03-25 | 2026-04-06 | 9 | 2026-03-25 | 2026-04-06 | 100 | Concrete crew B | 28 | 900 | 25200 | 25200 | completed-ontime | prev level FRM (SS+offset) |
| L1-FRM | L1 — Structural Beam Systems, Structural Framing | Superstructure | L1 | Steel | FRM | 2026-04-01 | 2026-04-14 | 2026-04-01 | 2026-04-14 | 10 | 2026-04-02 | 2026-04-20 | 100 | Steel erection crew | 42 | 750 | 31500 | 33390 | completed-late | L1-COL (SS+offset) |
| L1-FLR | L1 — Floors | Superstructure | L1 | Concrete | FLR | 2026-04-16 | 2026-04-29 | 2026-04-16 | 2026-04-29 | 10 | 2026-04-16 | 2026-04-29 | 100 | Concrete crew A | 3 | 4000 | 12000 | 12000 | completed-ontime | L1-FRM (FS+2d) |
| L1-WALL | L1 — Walls | Superstructure | L1 | Masonry/Concrete | WALL | 2026-04-20 | 2026-05-05 | 2026-04-20 | 2026-05-05 | 12 | 2026-04-23 | 2026-05-14 | 100 | Masonry crew | 21 | 1200 | 25200 | 27720 | completed-late | L1-FLR (SS+3d) |
| L1-GEN | L1 — Generic Models | Superstructure | L1 | Finishes/MEP | GEN | 2026-05-06 | 2026-05-14 | 2026-05-06 | 2026-05-14 | 7 | 2026-05-06 |  | 75 | Finishes/MEP crew | 15 | 500 | 7500 | 5625 | delayed | L1-WALL (FS+1d) |
| M1-FRM | M1 — Structural Framing | Superstructure | M1 | Steel | FRM | 2026-04-08 | 2026-04-21 | 2026-04-08 | 2026-04-21 | 10 | 2026-04-08 | 2026-04-21 | 100 | Steel erection crew | 19 | 750 | 14250 | 14250 | completed-ontime | prev level FRM (SS+offset) |
| L2-FRM | L2 — Structural Framing | Superstructure | L2 | Steel | FRM | 2026-04-15 | 2026-04-28 | 2026-04-15 | 2026-04-28 | 10 | 2026-04-17 | 2026-05-05 | 100 | Steel erection crew | 84 | 750 | 63000 | 67410 | completed-late | prev level FRM (SS+offset) |
| L2-FLR | L2 — Floors | Superstructure | L2 | Concrete | FLR | 2026-04-30 | 2026-05-12 | 2026-04-30 | 2026-05-12 | 9 | 2026-05-01 | 2026-05-15 | 100 | Concrete crew A | 2 | 4000 | 8000 | 8320 | completed-late | L2-FRM (FS+2d) |
| L2-WALL | L2 — Walls | Superstructure | L2 | Masonry/Concrete | WALL | 2026-05-04 | 2026-05-15 | 2026-05-04 | 2026-05-15 | 10 | 2026-05-05 |  | 80 | Masonry crew | 17 | 1200 | 20400 | 16320 | inprogress | L2-FLR (SS+3d) |
| L2-GEN | L2 — Generic Models | Superstructure | L2 | Finishes/MEP | GEN | 2026-05-18 | 2026-05-27 | 2026-05-18 | 2026-05-27 | 8 |  |  | 0 | Finishes/MEP crew | 16 | 500 | 8000 |  | future | L2-WALL (FS+1d) |
| L3-COL | L3 — Structural Columns | Superstructure | L3 | Concrete | COL | 2026-04-22 | 2026-04-28 | 2026-04-22 | 2026-04-28 | 5 |  |  | 0 | Concrete crew B | 3 | 900 | 2700 |  | future | prev level FRM (SS+offset) |
| L3-FRM-1 | L3 — Structural Beam Systems, Structural Framing | Superstructure | L3 | Steel | FRM | 2026-04-27 | 2026-05-13 | 2026-04-27 | 2026-05-13 | 13 |  |  | 0 | Steel erection crew | 104 | 750 | 78000 |  | future | L3-COL (SS+offset) |
| L3-FRM-2 | L3 — Structural Beam Systems, Structural Framing | Superstructure | L3 | Steel | FRM | 2026-05-04 | 2026-05-20 | 2026-05-04 | 2026-05-20 | 13 |  |  | 0 | Steel erection crew | 105 | 750 | 78750 |  | future | L3-FRM-1 (SS+50%) |
| L3-FLR | L3 — Floors | Superstructure | L3 | Concrete | FLR | 2026-05-22 | 2026-06-04 | 2026-05-22 | 2026-06-04 | 10 |  |  | 0 | Concrete crew A | 3 | 4000 | 12000 |  | future | L3-FRM-2 (FS+2d) |
| L3-WALL | L3 — Walls | Superstructure | L3 | Masonry/Concrete | WALL | 2026-05-25 | 2026-06-08 | 2026-05-25 | 2026-06-08 | 11 |  |  | 0 | Masonry crew | 19 | 1200 | 22800 |  | future | L3-FLR (SS+3d) |
| L3-GEN | L3 — Generic Models | Superstructure | L3 | Finishes/MEP | GEN | 2026-06-09 | 2026-06-19 | 2026-06-09 | 2026-06-19 | 9 |  |  | 0 | Finishes/MEP crew | 18 | 500 | 9000 |  | future | L3-WALL (FS+1d) |
| L4-FRM-1 | L4 — Structural Beam Systems, Structural Framing | Superstructure | L4 | Steel | FRM | 2026-05-14 | 2026-06-01 | 2026-05-14 | 2026-06-01 | 13 |  |  | 0 | Steel erection crew | 110 | 750 | 82500 |  | future | prev level FRM (SS+offset) |
| L4-FRM-2 | L4 — Structural Beam Systems, Structural Framing | Superstructure | L4 | Steel | FRM | 2026-05-20 | 2026-06-05 | 2026-05-20 | 2026-06-05 | 13 |  |  | 0 | Steel erection crew | 110 | 750 | 82500 |  | future | L4-FRM-1 (SS+50%) |
| L4-FLR | L4 — Floors | Superstructure | L4 | Concrete | FLR | 2026-06-08 | 2026-06-18 | 2026-06-08 | 2026-06-18 | 9 |  |  | 0 | Concrete crew A | 2 | 4000 | 8000 |  | future | L4-FRM-2 (FS+2d) |
| L4-WALL | L4 — Walls | Superstructure | L4 | Masonry/Concrete | WALL | 2026-06-11 | 2026-06-25 | 2026-06-11 | 2026-06-25 | 11 |  |  | 0 | Masonry crew | 19 | 1200 | 22800 |  | future | L4-FLR (SS+3d) |
| L4-GEN | L4 — Generic Models | Superstructure | L4 | Finishes/MEP | GEN | 2026-06-26 | 2026-07-08 | 2026-06-26 | 2026-07-08 | 9 |  |  | 0 | Finishes/MEP crew | 18 | 500 | 9000 |  | future | L4-WALL (FS+1d) |
| L5-COL | L5 — Structural Columns | Superstructure | L5 | Concrete | COL | 2026-06-01 | 2026-06-05 | 2026-06-01 | 2026-06-05 | 5 |  |  | 0 | Concrete crew B | 5 | 900 | 4500 |  | future | prev level FRM (SS+offset) |
| L5-FRM-1 | L5 — Structural Beam Systems, Structural Framing | Superstructure | L5 | Steel | FRM | 2026-06-05 | 2026-06-23 | 2026-06-05 | 2026-06-23 | 13 |  |  | 0 | Steel erection crew | 110 | 750 | 82500 |  | future | L5-COL (SS+offset) |
| L5-FRM-2 | L5 — Structural Beam Systems, Structural Framing | Superstructure | L5 | Steel | FRM | 2026-06-11 | 2026-06-29 | 2026-06-11 | 2026-06-29 | 13 |  |  | 0 | Steel erection crew | 111 | 750 | 83250 |  | future | L5-FRM-1 (SS+50%) |
| L5-FLR | L5 — Floors | Superstructure | L5 | Concrete | FLR | 2026-07-01 | 2026-07-14 | 2026-07-01 | 2026-07-14 | 10 |  |  | 0 | Concrete crew A | 3 | 4000 | 12000 |  | future | L5-FRM-2 (FS+2d) |
| L5-WALL | L5 — Walls | Superstructure | L5 | Masonry/Concrete | WALL | 2026-07-06 | 2026-07-20 | 2026-07-06 | 2026-07-20 | 11 |  |  | 0 | Masonry crew | 18 | 1200 | 21600 |  | future | L5-FLR (SS+3d) |
| L5-GEN | L5 — Generic Models | Superstructure | L5 | Finishes/MEP | GEN | 2026-07-21 | 2026-07-29 | 2026-07-21 | 2026-07-29 | 7 |  |  | 0 | Finishes/MEP crew | 6 | 500 | 3000 |  | future | L5-WALL (FS+1d) |
| R2-FRM | R2 — Structural Beam Systems | Roof | R2 | Steel | FRM | 2026-06-22 | 2026-07-03 | 2026-06-22 | 2026-07-03 | 10 |  |  | 0 | Steel erection crew | 14 | 750 | 10500 |  | future | prev level FRM (SS+offset) |
| R2-FLR | R2 — Floors | Roof | R2 | Concrete | FLR | 2026-07-06 | 2026-07-16 | 2026-07-06 | 2026-07-16 | 9 |  |  | 0 | Concrete crew A | 2 | 4000 | 8000 |  | future | R2-FRM (FS+2d) |
| R2-WALL | R2 — Walls | Roof | R2 | Masonry/Concrete | WALL | 2026-07-09 | 2026-07-31 | 2026-07-09 | 2026-07-31 | 17 |  |  | 0 | Masonry crew | 37 | 1200 | 44400 |  | future | R2-FLR (SS+3d) |
| RF2-COL | RF2 — Structural Columns | Roof | RF2 | Concrete | COL | 2026-06-29 | 2026-07-07 | 2026-06-29 | 2026-07-07 | 7 |  |  | 0 | Concrete crew B | 22 | 900 | 19800 |  | future | prev level FRM (SS+offset) |
| RF2-FRM-1 | RF2 — Structural Framing | Roof | RF2 | Steel | FRM | 2026-07-06 | 2026-07-17 | 2026-07-06 | 2026-07-17 | 10 |  |  | 0 | Steel erection crew | 86 | 750 | 64500 |  | future | RF2-COL (SS+offset) |
| RF2-FRM-2 | RF2 — Structural Beam Systems, Structural Framing | Roof | RF2 | Steel | FRM | 2026-07-13 | 2026-07-24 | 2026-07-13 | 2026-07-24 | 10 |  |  | 0 | Steel erection crew | 86 | 750 | 64500 |  | future | RF2-FRM-1 (SS+50%) |
| RF2-GEN | RF2 — Generic Models | Roof | RF2 | Finishes/MEP | GEN | 2026-07-27 | 2026-08-06 | 2026-07-27 | 2026-08-06 | 9 |  |  | 0 | Finishes/MEP crew | 18 | 500 | 9000 |  | future | prev activity (FS) |
| PR-FRM | Parapet — Structural Framing | Roof | Parapet | Steel | FRM | 2026-07-20 | 2026-07-31 | 2026-07-20 | 2026-07-31 | 10 |  |  | 0 | Steel erection crew | 37 | 750 | 27750 |  | future | prev level FRM (SS+offset) |
| PR-FLR | Parapet — Floors | Roof | Parapet | Concrete | FLR | 2026-08-03 | 2026-08-18 | 2026-08-03 | 2026-08-18 | 12 |  |  | 0 | Concrete crew A | 5 | 4000 | 20000 |  | future | PR-FRM (FS+2d) |
| DEMOB-SITE | Strip site, clean-up, handover | Site | Demobilisation | Site | DEMOB | 2026-08-19 | 2026-08-25 | 2026-08-19 | 2026-08-25 | 5 |  |  | 0 | Site management | 1 | 15000 | 15000 |  | future | all preceding |
